# Lịch xuất bản sách thiếu nhi

How a schedule from MS Project changed from version to version. A marks actual dates.

## Version 1 (saved 2025-09-27, file Advanced Tracking B_Start.mpp)

| ID | WBS | Task | Duration | Start | Finish | Predecessors | Complete | Total float | Constraint |
| --- | --- | --- | --- | --- | --- | --- | --- | --- | --- |
| 1 | 1 | **Editorial staff meeting** | 60.12d | 2025-10-06 08:00 A | 2025-12-29 09:00 |  | 15% | 98.88d |  |
| 2 |  | Editorial staff meeting 1 | 1h | 2025-10-06 08:00 A | 2025-10-06 09:00 A |  | 100% |  | start no earlier than 2025-10-06 08:00 |
| 3 |  | Editorial staff meeting 2 | 1h | 2025-10-13 08:00 A | 2025-10-13 09:00 A |  | 100% |  | start no earlier than 2025-10-13 08:00 |
| 4 |  | Editorial staff meeting 3 | 1h | 2025-10-20 08:00 | 2025-10-20 09:00 |  |  | 148.88d | start no earlier than 2025-10-20 08:00 |
| 5 |  | Editorial staff meeting 4 | 1h | 2025-10-27 08:00 | 2025-10-27 09:00 |  |  | 143.88d | start no earlier than 2025-10-27 08:00 |
| 6 |  | Editorial staff meeting 5 | 1h | 2025-11-03 08:00 | 2025-11-03 09:00 |  |  | 138.88d | start no earlier than 2025-11-03 08:00 |
| 7 |  | Editorial staff meeting 6 | 1h | 2025-11-10 08:00 | 2025-11-10 09:00 |  |  | 133.88d | start no earlier than 2025-11-10 08:00 |
| 8 |  | Editorial staff meeting 7 | 1h | 2025-11-17 08:00 | 2025-11-17 09:00 |  |  | 128.88d | start no earlier than 2025-11-17 08:00 |
| 9 |  | Editorial staff meeting 8 | 1h | 2025-11-24 08:00 | 2025-11-24 09:00 |  |  | 123.88d | start no earlier than 2025-11-24 08:00 |
| 10 |  | Editorial staff meeting 9 | 1h | 2025-12-01 08:00 | 2025-12-01 09:00 |  |  | 118.88d | start no earlier than 2025-12-01 08:00 |
| 11 |  | Editorial staff meeting 10 | 1h | 2025-12-08 08:00 | 2025-12-08 09:00 |  |  | 113.88d | start no earlier than 2025-12-08 08:00 |
| 12 |  | Editorial staff meeting 11 | 1h | 2025-12-15 08:00 | 2025-12-15 09:00 |  |  | 108.88d | start no earlier than 2025-12-15 08:00 |
| 13 |  | Editorial staff meeting 12 | 1h | 2025-12-22 08:00 | 2025-12-22 09:00 |  |  | 103.88d | start no earlier than 2025-12-22 08:00 |
| 14 |  | Editorial staff meeting 13 | 1h | 2025-12-29 08:00 | 2025-12-29 09:00 |  |  | 98.88d | start no earlier than 2025-12-29 08:00 |
| 15 | 2 | **Tiếp nhận bản thảo** | 33.5d | 2025-09-29 08:00 A | 2025-11-13 12:00 |  | 58% | 0d |  |
| 16 |  | Đã nhận bản thảo | 0d | 2025-09-29 08:00 A | 2025-09-29 08:00 A |  | 100% |  |  |
| 17 |  | Biên tập nội dung | 15d | 2025-09-29 08:00 A | 2025-10-23 10:00 A | 16 | 100% |  |  |
| 18 |  | Duyệt tranh minh họa gốc | 10.25d | 2025-10-14 10:00 A | 2025-10-28 12:00 | 17FS-5d | 66% | 0d |  |
| 19 |  | Tác giả duyệt biên tập nội dung | 12d | 2025-10-28 13:00 | 2025-11-13 12:00 | 17, 18 |  | 0d |  |
| 20 |  | Bàn giao cho ban biên tập | 0d | 2025-11-13 12:00 | 2025-11-13 12:00 | 19 |  | 0d |  |
| 21 | 3 | **Biên tập** | 29.12d | 2025-11-13 13:00 | 2025-12-24 14:00 | 15 |  | 0d |  |
| 22 |  | Sắp xếp bản thảo để biên tập chính tả & hình thức | 5.12d | 2025-11-13 13:00 | 2025-11-20 14:00 |  |  | 0d |  |
| 23 |  | Biên tập chính tả & hình thức | 11.25d | 2025-11-20 14:00 | 2025-12-05 16:00 | 22 |  | 0d |  |
| 24 |  | Tác giả duyệt biên tập chính tả & hình thức | 10d | 2025-12-05 16:00 | 2025-12-19 16:00 | 23 |  | 0d |  |
| 25 |  | Tích hợp chỉnh sửa biên tập chính tả & hình thức | 5.12d | 2025-12-17 11:00 | 2025-12-24 14:00 | 24FS-2.5% |  | 0d |  |
| 26 |  | Bàn giao cho bộ phận sản xuất | 0d | 2025-12-24 14:00 | 2025-12-24 14:00 | 25 |  | 0d |  |
| 27 | 4 | **Thiết kế và sản xuất** | 57.38d | 2025-12-24 14:00 | 2026-03-13 17:00 | 21 |  | 0d |  |
| 28 |  | Dàn trang | 15d | 2025-12-24 14:00 | 2026-01-14 14:00 |  |  | 0d |  |
| 29 |  | Thiết kế minh họa nội dung sách | 15.25d | 2025-12-24 14:00 | 2026-01-14 16:00 | 28SS |  | 0d |  |
| 30 | 4.3 | **Duyệt bản trang lần 1** | 30d | 2026-01-14 16:00 | 2026-02-25 16:00 | 29 |  | 0d |  |
| 31 |  | Hiệu đính và lập mục lục | 10d | 2026-01-14 16:00 | 2026-01-28 16:00 |  |  | 0d | start no earlier than 2026-01-07 08:00 |
| 32 |  | Tích hợp chỉnh sửa từ duyệt bản trang lần 1 | 10d | 2026-01-28 16:00 | 2026-02-11 16:00 | 31 |  | 0d |  |
| 33 |  | Gửi bản đã hiệu đính cho sản xuất | 0d | 2026-02-11 16:00 | 2026-02-11 16:00 | 32 |  | 0d |  |
| 34 |  | Nhập chỉnh sửa trang và mục lục | 5d | 2026-02-11 16:00 | 2026-02-18 16:00 | 33 |  | 0d |  |
| 35 |  | Thiết kế bìa | 5d | 2026-02-18 16:00 | 2026-02-25 16:00 | 34 |  | 0d |  |
| 36 | 4.4 | **Duyệt bản trang lần 2** | 12.12d | 2026-02-25 16:00 | 2026-03-13 17:00 |  |  | 0d |  |
| 37 |  | Hiệu đính và duyệt lại | 6.5d | 2026-02-25 16:00 | 2026-03-06 11:00 | 35 |  | 0d |  |
| 38 |  | Gửi bản đã hiệu đính cho sản xuất | 0d | 2026-03-06 11:00 | 2026-03-06 11:00 | 37 |  | 0d |  |
| 39 |  | Duyệt cuối cùng | 5d | 2026-03-09 08:00 | 2026-03-13 17:00 | 38 |  | 0d |  |
| 40 | 4.5 | **Thiết kế website đi kèm sách** | 10d | 2026-02-25 16:00 | 2026-03-11 16:00 | 30 |  | 2.12d |  |
| 41 |  | Tạo bản mẫu | 4.5d | 2026-02-25 16:00 | 2026-03-09 16:00 |  |  | 2.12d |  |
| 42 |  | Duyệt cùng tác giả | 2d | 2026-03-09 16:00 | 2026-03-11 16:00 | 41 |  | 2.12d |  |
| 43 | 5 | **Chuẩn bị màu và in ấn** | 44d | 2026-03-16 08:00 | 2026-05-14 17:00 | 40 |  | 0d |  |
| 44 |  | Gửi đến nhà in màu | 1d | 2026-03-16 08:00 | 2026-03-16 17:00 | 36 |  | 0d |  |
| 45 |  | Tạo bản in thử | 10d | 2026-03-17 08:00 | 2026-03-30 17:00 | 44 |  | 0d |  |
| 46 |  | In và vận chuyển | 30d | 2026-04-03 08:00 | 2026-05-14 17:00 | 45FS+3d |  | 0d |  |
| 47 | 6 | **Chuẩn bị ra mắt sách** | 22d | 2026-03-17 08:00 | 2026-04-15 17:00 |  |  | 21d |  |
| 48 |  | Lập kế hoạch ra mắt | 5d | 2026-03-17 08:00 | 2026-03-23 17:00 | 44 |  | 21d |  |
| 49 |  | Phân công thành viên nhóm ra mắt | 1d | 2026-03-24 08:00 | 2026-03-24 17:00 | 48 |  | 21d |  |
| 50 |  | Hoàn thành bảng câu hỏi cho tác giả | 5d | 2026-03-25 08:00 | 2026-03-31 17:00 | 49 |  | 21d |  |
| 51 |  | Sắp xếp phỏng vấn tác giả | 1d | 2026-04-01 08:00 | 2026-04-01 17:00 | 50 |  | 21d |  |
| 52 |  | Thiết kế và đặt in tài liệu marketing | 10d | 2026-04-02 08:00 | 2026-04-15 17:00 | 51 |  | 21d |  |

## Version 2 (saved 2025-09-27, file Advanced Tracking C_Start.mpp)

Last finish 2026-05-14 → 2026-05-25 (+11d). Complete tasks 4 → 14.

Changed:

| ID | Task | Start | Finish | Duration | Complete | Total float | Other |
| --- | --- | --- | --- | --- | --- | --- | --- |
| 1 | **Editorial staff meeting** |  |  |  | 15% → 54% | 98.88d → 105.88d |  |
| 4 | Editorial staff meeting 3 | 2025-10-20 08:00 A | 2025-10-20 09:00 A |  | 0% → 100% | 148.88d → none |  |
| 5 | Editorial staff meeting 4 | 2025-10-27 08:00 A | 2025-10-27 09:00 A |  | 0% → 100% | 143.88d → none |  |
| 6 | Editorial staff meeting 5 | 2025-11-03 08:00 A | 2025-11-03 09:00 A |  | 0% → 100% | 138.88d → none |  |
| 7 | Editorial staff meeting 6 | 2025-11-10 08:00 A | 2025-11-10 09:00 A |  | 0% → 100% | 133.88d → none |  |
| 8 | Editorial staff meeting 7 | 2025-11-17 08:00 A | 2025-11-17 09:00 A |  | 0% → 100% | 128.88d → none |  |
| 15 | **Mua bản quyền** |  | 2025-11-13 12:00 → 2025-11-17 08:00 A (+4d) | 33.5d → 35d | 58% → 100% | 0d → none | was named Tiếp nhận bản thảo |
| 18 | Duyệt tranh minh họa gốc |  | 2025-10-28 12:00 A |  | 66% → 100% | 0d → none |  |
| 19 | Tác giả duyệt biên tập nội dung | 2025-10-28 13:00 A | 2025-11-13 12:00 → 2025-11-14 17:00 A (+1d) | 12d → 13.5d | 0% → 100% | 0d → none | resources Đinh Thị Hồng Nhung; Người biên tập ngôn ngữ → Bùi Văn Khải; Người biên tập ngôn ngữ |
| 20 | Bàn giao cho ban biên tập | 2025-11-13 12:00 → 2025-11-17 08:00 A (+4d) | 2025-11-13 12:00 → 2025-11-17 08:00 A (+4d) |  | 0% → 100% | 0d → none |  |
| 21 | **Biên tập** | 2025-11-13 13:00 → 2025-11-17 08:00 A (+4d) | 2025-12-24 14:00 → 2026-01-01 15:00 (+8d) | 29.12d → 33.75d | 0% → 70% |  |  |
| 22 | Sắp xếp bản thảo để biên tập chính tả & hình thức | 2025-11-13 13:00 → 2025-11-17 08:00 A (+4d) | 2025-11-20 14:00 → 2025-12-12 17:00 A (+22d) | 5.12d → 19.75d | 0% → 100% | 0d → none |  |
| 23 | Biên tập chính tả & hình thức | 2025-11-20 14:00 → 2025-11-21 08:00 A (+1d) | 2025-12-05 16:00 → 2025-12-15 17:00 A (+10d) | 11.25d → 16d | 0% → 100% | 0d → none |  |
| 24 | Tác giả duyệt biên tập chính tả & hình thức | 2025-12-05 16:00 → 2025-12-16 08:00 (+11d) | 2025-12-19 16:00 → 2025-12-29 17:00 (+10d) |  |  |  | resources Đinh Thị Hồng Nhung; Người biên tập ngôn ngữ [25%] → Bùi Văn Khải; Người biên tập ngôn ngữ [25%] |
| 25 | Tích hợp chỉnh sửa biên tập chính tả & hình thức | 2025-12-17 11:00 → 2025-12-25 13:00 (+8d) | 2025-12-24 14:00 → 2026-01-01 15:00 (+8d) |  |  |  |  |
| 26 | Bàn giao cho bộ phận sản xuất | 2025-12-24 14:00 → 2026-01-01 15:00 (+8d) | 2025-12-24 14:00 → 2026-01-01 15:00 (+8d) |  |  |  |  |
| 27 | **Thiết kế và sản xuất** | 2025-12-24 14:00 → 2026-01-01 15:00 (+8d) | 2026-03-13 17:00 → 2026-03-24 17:00 (+11d) | 57.38d → 58.25d |  |  |  |
| 28 | Dàn trang | 2025-12-24 14:00 → 2026-01-01 15:00 (+8d) | 2026-01-14 14:00 → 2026-01-22 15:00 (+8d) |  |  |  |  |
| 29 | Thiết kế minh họa nội dung sách | 2025-12-24 14:00 → 2026-01-01 15:00 (+8d) | 2026-01-14 16:00 → 2026-01-22 17:00 (+8d) |  |  |  | resources Bùi Văn Khải; Lê Anh Tuấn → Đinh Thị Hồng Nhung; Lê Anh Tuấn |
| 30 | **Duyệt bản trang lần 1** | 2026-01-14 16:00 → 2026-01-23 08:00 (+9d) | 2026-02-25 16:00 → 2026-03-05 17:00 (+8d) |  |  |  |  |
| 31 | Hiệu đính và lập mục lục | 2026-01-14 16:00 → 2026-01-23 08:00 (+9d) | 2026-01-28 16:00 → 2026-02-05 17:00 (+8d) |  |  |  | resources Đinh Thị Hồng Nhung; Người biên tập ngôn ngữ → Bùi Văn Khải; Người biên tập ngôn ngữ |
| 32 | Tích hợp chỉnh sửa từ duyệt bản trang lần 1 | 2026-01-28 16:00 → 2026-02-06 08:00 (+9d) | 2026-02-11 16:00 → 2026-02-19 17:00 (+8d) |  |  |  |  |
| 33 | Gửi bản đã hiệu đính cho sản xuất | 2026-02-11 16:00 → 2026-02-19 17:00 (+8d) | 2026-02-11 16:00 → 2026-02-19 17:00 (+8d) |  |  |  |  |
| 34 | Nhập chỉnh sửa trang và mục lục | 2026-02-11 16:00 → 2026-02-20 08:00 (+9d) | 2026-02-18 16:00 → 2026-02-26 17:00 (+8d) |  |  |  |  |
| 35 | Thiết kế bìa | 2026-02-18 16:00 → 2026-02-27 08:00 (+9d) | 2026-02-25 16:00 → 2026-03-05 17:00 (+8d) |  |  |  | resources Bùi Văn Khải → Đinh Thị Hồng Nhung |
| 36 | **Duyệt bản trang lần 2** | 2026-02-25 16:00 → 2026-03-06 08:00 (+9d) | 2026-03-13 17:00 → 2026-03-24 17:00 (+11d) | 12.12d → 13d |  |  |  |
| 37 | Hiệu đính và duyệt lại | 2026-02-25 16:00 → 2026-03-06 08:00 (+9d) | 2026-03-06 11:00 → 2026-03-16 12:00 (+10d) |  |  |  |  |
| 38 | Gửi bản đã hiệu đính cho sản xuất | 2026-03-06 11:00 → 2026-03-16 12:00 (+10d) | 2026-03-06 11:00 → 2026-03-16 12:00 (+10d) |  |  |  |  |
| 39 | Duyệt cuối cùng | 2026-03-09 08:00 → 2026-03-18 08:00 (+9d) | 2026-03-13 17:00 → 2026-03-24 17:00 (+11d) |  |  |  |  |
| 40 | **Thiết kế website đi kèm sách** | 2026-02-25 16:00 → 2026-03-06 08:00 (+9d) | 2026-03-11 16:00 → 2026-03-19 17:00 (+8d) |  |  | 2.12d → 3d |  |
| 41 | Tạo bản mẫu | 2026-02-25 16:00 → 2026-03-06 08:00 (+9d) | 2026-03-09 16:00 → 2026-03-17 17:00 (+8d) |  |  | 2.12d → 3d | resources Bùi Văn Khải; Lê Anh Tuấn → Đinh Thị Hồng Nhung; Lê Anh Tuấn |
| 42 | Duyệt cùng tác giả | 2026-03-09 16:00 → 2026-03-18 08:00 (+9d) | 2026-03-11 16:00 → 2026-03-19 17:00 (+8d) |  |  | 2.12d → 3d | resources Bùi Văn Khải; Đinh Thị Hồng Nhung; Du lịch [0.1%]; Trần Thị Thu Hà [50%] → Đinh Thị Hồng Nhung; Bùi Văn Khải; Du lịch [0.1%]; Trần Thị Thu Hà [50%] |
| 43 | **Chuẩn bị màu và in ấn** | 2026-03-16 08:00 → 2026-03-25 08:00 (+9d) | 2026-05-14 17:00 → 2026-05-25 17:00 (+11d) |  |  |  |  |
| 44 | Gửi đến nhà in màu | 2026-03-16 08:00 → 2026-03-25 08:00 (+9d) | 2026-03-16 17:00 → 2026-03-25 17:00 (+9d) |  |  |  |  |
| 45 | Tạo bản in thử | 2026-03-17 08:00 → 2026-03-26 08:00 (+9d) | 2026-03-30 17:00 → 2026-04-08 17:00 (+9d) |  |  |  | resources Dịch vụ cấu hình màu → Dịch vụ chỉnh màu in ấn |
| 46 | In và vận chuyển | 2026-04-03 08:00 → 2026-04-14 08:00 (+11d) | 2026-05-14 17:00 → 2026-05-25 17:00 (+11d) |  |  |  |  |
| 47 | **Chuẩn bị ra mắt sách** | 2026-03-17 08:00 → 2026-03-26 08:00 (+9d) | 2026-04-15 17:00 → 2026-04-24 17:00 (+9d) |  |  |  |  |
| 48 | Lập kế hoạch ra mắt | 2026-03-17 08:00 → 2026-03-26 08:00 (+9d) | 2026-03-23 17:00 → 2026-04-01 17:00 (+9d) |  |  |  |  |
| 49 | Phân công thành viên nhóm ra mắt | 2026-03-24 08:00 → 2026-04-02 08:00 (+9d) | 2026-03-24 17:00 → 2026-04-02 17:00 (+9d) |  |  |  |  |
| 50 | Hoàn thành bảng câu hỏi cho tác giả | 2026-03-25 08:00 → 2026-04-03 08:00 (+9d) | 2026-03-31 17:00 → 2026-04-09 17:00 (+9d) |  |  |  | resources Lê Anh Tuấn; Đinh Thị Hồng Nhung; Du lịch [0.1%] → Lê Anh Tuấn; Bùi Văn Khải; Du lịch [0.1%] |
| 51 | Sắp xếp phỏng vấn tác giả | 2026-04-01 08:00 → 2026-04-10 08:00 (+9d) | 2026-04-01 17:00 → 2026-04-10 17:00 (+9d) |  |  |  |  |
| 52 | Thiết kế và đặt in tài liệu marketing | 2026-04-02 08:00 → 2026-04-13 08:00 (+11d) | 2026-04-15 17:00 → 2026-04-24 17:00 (+9d) |  |  |  |  |

## Version 3 (data date 2025-09-27, saved 2025-09-27, file Advanced Tracking A_Start.mpp)

Last finish 2026-05-25 → 2026-05-21 (-4d). Complete tasks 14 → 1.

Changed:

| ID | Task | Start | Finish | Duration | Complete | Total float | Other |
| --- | --- | --- | --- | --- | --- | --- | --- |
| 1 | **Editorial staff meeting** | 2025-10-06 08:00 A → 2025-10-06 08:00 |  |  | 54% → 0% | 105.88d → 103.75d | baseline start 2015-04-13 08:00 → 2025-10-06 08:00; baseline finish 2015-07-06 09:00 → 2025-12-29 09:00 |
| 2 | Editorial staff meeting 1 | 2025-10-06 08:00 A → 2025-10-06 08:00 | 2025-10-06 09:00 A → 2025-10-06 09:00 |  | 100% → 0% | none → 163.75d | resources Nguyễn Minh Quân; Võ Hoàng Nam; Lê Anh Tuấn; Trần Thị Thu Hà [50%] → Nguyễn Minh Quân; Phạm Ngọc Lan; Lê Anh Tuấn; Trần Thị Thu Hà [50%]; baseline start 2015-04-13 08:00 → 2025-10-06 08:00; baseline finish 2015-04-13 09:00 → 2025-10-06 09:00 |
| 3 | Editorial staff meeting 2 | 2025-10-13 08:00 A → 2025-10-13 08:00 | 2025-10-13 09:00 A → 2025-10-13 09:00 |  | 100% → 0% | none → 158.75d | resources Nguyễn Minh Quân; Võ Hoàng Nam; Lê Anh Tuấn; Trần Thị Thu Hà [50%] → Nguyễn Minh Quân; Phạm Ngọc Lan; Lê Anh Tuấn; Trần Thị Thu Hà [50%]; baseline start 2015-04-20 08:00 → 2025-10-13 08:00; baseline finish 2015-04-20 09:00 → 2025-10-13 09:00 |
| 4 | Editorial staff meeting 3 | 2025-10-20 08:00 A → 2025-10-20 08:00 | 2025-10-20 09:00 A → 2025-10-20 09:00 |  | 100% → 0% | none → 153.75d | resources Nguyễn Minh Quân; Võ Hoàng Nam; Lê Anh Tuấn; Trần Thị Thu Hà [50%] → Nguyễn Minh Quân; Phạm Ngọc Lan; Lê Anh Tuấn; Trần Thị Thu Hà [50%]; baseline start 2015-04-27 08:00 → 2025-10-20 08:00; baseline finish 2015-04-27 09:00 → 2025-10-20 09:00 |
| 5 | Editorial staff meeting 4 | 2025-10-27 08:00 A → 2025-10-27 08:00 | 2025-10-27 09:00 A → 2025-10-27 09:00 |  | 100% → 0% | none → 148.75d | resources Nguyễn Minh Quân; Võ Hoàng Nam; Lê Anh Tuấn; Trần Thị Thu Hà [50%] → Nguyễn Minh Quân; Phạm Ngọc Lan; Lê Anh Tuấn; Trần Thị Thu Hà [50%]; baseline start 2015-05-04 08:00 → 2025-10-27 08:00; baseline finish 2015-05-04 09:00 → 2025-10-27 09:00 |
| 6 | Editorial staff meeting 5 | 2025-11-03 08:00 A → 2025-11-03 08:00 | 2025-11-03 09:00 A → 2025-11-03 09:00 |  | 100% → 0% | none → 143.75d | resources Nguyễn Minh Quân; Võ Hoàng Nam; Lê Anh Tuấn; Trần Thị Thu Hà [50%] → Nguyễn Minh Quân; Phạm Ngọc Lan; Lê Anh Tuấn; Trần Thị Thu Hà [50%]; baseline start 2015-05-11 08:00 → 2025-11-03 08:00; baseline finish 2015-05-11 09:00 → 2025-11-03 09:00 |
| 7 | Editorial staff meeting 6 | 2025-11-10 08:00 A → 2025-11-10 08:00 | 2025-11-10 09:00 A → 2025-11-10 09:00 |  | 100% → 0% | none → 138.75d | resources Nguyễn Minh Quân; Võ Hoàng Nam; Lê Anh Tuấn; Trần Thị Thu Hà [50%] → Nguyễn Minh Quân; Phạm Ngọc Lan; Lê Anh Tuấn; Trần Thị Thu Hà [50%]; baseline start 2015-05-18 08:00 → 2025-11-10 08:00; baseline finish 2015-05-18 09:00 → 2025-11-10 09:00 |
| 8 | Editorial staff meeting 7 | 2025-11-17 08:00 A → 2025-11-17 08:00 | 2025-11-17 09:00 A → 2025-11-17 09:00 |  | 100% → 0% | none → 133.75d | resources Nguyễn Minh Quân; Võ Hoàng Nam; Lê Anh Tuấn; Trần Thị Thu Hà [50%] → Nguyễn Minh Quân; Phạm Ngọc Lan; Lê Anh Tuấn; Trần Thị Thu Hà [50%]; baseline start 2015-05-25 08:00 → 2025-11-17 08:00; baseline finish 2015-05-25 09:00 → 2025-11-17 09:00 |
| 9 | Editorial staff meeting 8 |  |  |  |  | 130.88d → 128.75d | resources Nguyễn Minh Quân; Võ Hoàng Nam; Lê Anh Tuấn; Trần Thị Thu Hà [50%] → Nguyễn Minh Quân; Phạm Ngọc Lan; Lê Anh Tuấn; Trần Thị Thu Hà [50%]; baseline start 2015-06-01 08:00 → 2025-11-24 08:00; baseline finish 2015-06-01 09:00 → 2025-11-24 09:00 |
| 10 | Editorial staff meeting 9 |  |  |  |  | 125.88d → 123.75d | resources Nguyễn Minh Quân; Võ Hoàng Nam; Lê Anh Tuấn; Trần Thị Thu Hà [50%] → Nguyễn Minh Quân; Phạm Ngọc Lan; Lê Anh Tuấn; Trần Thị Thu Hà [50%]; baseline start 2015-06-08 08:00 → 2025-12-01 08:00; baseline finish 2015-06-08 09:00 → 2025-12-01 09:00 |
| 11 | Editorial staff meeting 10 |  |  |  |  | 120.88d → 118.75d | resources Nguyễn Minh Quân; Võ Hoàng Nam; Lê Anh Tuấn; Trần Thị Thu Hà [50%] → Nguyễn Minh Quân; Phạm Ngọc Lan; Lê Anh Tuấn; Trần Thị Thu Hà [50%]; baseline start 2015-06-15 08:00 → 2025-12-08 08:00; baseline finish 2015-06-15 09:00 → 2025-12-08 09:00 |
| 12 | Editorial staff meeting 11 |  |  |  |  | 115.88d → 113.75d | resources Nguyễn Minh Quân; Võ Hoàng Nam; Lê Anh Tuấn; Trần Thị Thu Hà [50%] → Nguyễn Minh Quân; Phạm Ngọc Lan; Lê Anh Tuấn; Trần Thị Thu Hà [50%]; baseline start 2015-06-22 08:00 → 2025-12-15 08:00; baseline finish 2015-06-22 09:00 → 2025-12-15 09:00 |
| 13 | Editorial staff meeting 12 |  |  |  |  | 110.88d → 108.75d | resources Nguyễn Minh Quân; Võ Hoàng Nam; Lê Anh Tuấn; Trần Thị Thu Hà [50%] → Nguyễn Minh Quân; Phạm Ngọc Lan; Lê Anh Tuấn; Trần Thị Thu Hà [50%]; baseline start 2015-06-29 08:00 → 2025-12-22 08:00; baseline finish 2015-06-29 09:00 → 2025-12-22 09:00 |
| 14 | Editorial staff meeting 13 |  |  |  |  | 105.88d → 103.75d | resources Nguyễn Minh Quân; Võ Hoàng Nam; Lê Anh Tuấn; Trần Thị Thu Hà [50%] → Nguyễn Minh Quân; Phạm Ngọc Lan; Lê Anh Tuấn; Trần Thị Thu Hà [50%]; baseline start 2015-07-06 08:00 → 2025-12-29 08:00; baseline finish 2015-07-06 09:00 → 2025-12-29 09:00 |
| 15 | **Mua sắm** | 2025-09-29 08:00 A → 2025-09-27 08:00 A (-2d) | 2025-11-17 08:00 A → 2025-11-17 12:00 | 35d → 35.5d | 100% → 0% | none → 0d | was named Mua bản quyền; baseline start 2015-04-06 08:00 → 2025-09-27 08:00; baseline finish 2015-05-25 12:00 → 2025-11-17 12:00 |
| 16 | Tiếp nhận bản thảo | 2025-09-29 08:00 A → 2025-09-27 08:00 A (-2d) | 2025-09-29 08:00 A → 2025-09-27 08:00 A (-2d) |  |  |  | was named Đã nhận bản thảo; baseline start 2015-04-06 08:00 → 2025-09-27 08:00; baseline finish 2015-04-06 08:00 → 2025-09-27 08:00 |
| 17 | Biên tập nội dung | 2025-09-29 08:00 A → 2025-09-29 08:00 | 2025-10-23 10:00 A → 2025-10-23 10:00 |  | 100% → 0% | none → 0d | baseline start 2015-04-06 08:00 → 2025-09-29 08:00; baseline finish 2015-04-30 10:00 → 2025-10-23 10:00 |
| 18 | Đánh giá bản vẽ gốc | 2025-10-14 10:00 A → 2025-10-16 10:00 (+2d) | 2025-10-28 12:00 A → 2025-10-30 12:00 (+2d) |  | 100% → 0% | none → 0d | was named Duyệt tranh minh họa gốc; resources Lê Anh Tuấn; Phạm Ngọc Lan → Lê Anh Tuấn; Đinh Thị Hồng Nhung; baseline start 2015-04-23 10:00 → 2025-10-16 10:00; baseline finish 2015-05-07 12:00 → 2025-10-30 12:00 |
| 19 | Tác giả duyệt bản biên tập nội dung | 2025-10-28 13:00 A → 2025-10-30 13:00 (+2d) | 2025-11-14 17:00 A → 2025-11-17 12:00 (+3d) | 13.5d → 12d | 100% → 0% | none → 0d | was named Tác giả duyệt biên tập nội dung; resources Bùi Văn Khải; Người biên tập ngôn ngữ → Bùi Văn Khải; Nhân viên sao chép chỉnh sửa; baseline start 2015-05-07 13:00 → 2025-10-30 13:00; baseline finish 2015-05-25 12:00 → 2025-11-17 12:00 |
| 20 | Chuyển giao cho bộ phận biên tập | 2025-11-17 08:00 A → 2025-11-17 12:00 | 2025-11-17 08:00 A → 2025-11-17 12:00 |  | 100% → 0% | none → 0d | was named Bàn giao cho ban biên tập; baseline start 2015-05-25 12:00 → 2025-11-17 12:00; baseline finish 2015-05-25 12:00 → 2025-11-17 12:00 |
| 21 | **Ban biên tập** | 2025-11-17 08:00 A → 2025-11-17 13:00 | 2026-01-01 15:00 → 2025-12-26 14:00 (-6d) | 33.75d → 29.12d | 70% → 0% |  | was named Biên tập; baseline start 2015-05-25 13:00 → 2025-11-17 13:00; baseline finish 2015-07-03 14:00 → 2025-12-26 14:00 |
| 22 | Chuẩn bị bản thảo cho biên tập chi tiết | 2025-11-17 08:00 A → 2025-11-17 13:00 | 2025-12-12 17:00 A → 2025-11-24 14:00 (-18d) | 19.75d → 5.12d | 100% → 0% | none → 0d | was named Sắp xếp bản thảo để biên tập chính tả & hình thức; baseline start 2015-05-25 13:00 → 2025-11-17 13:00; baseline finish 2015-06-01 14:00 → 2025-11-24 14:00 |
| 23 | Biên tập chính tả & hình thức | 2025-11-21 08:00 A → 2025-11-24 14:00 (+3d) | 2025-12-15 17:00 A → 2025-12-09 16:00 (-6d) | 16d → 11.25d | 100% → 0% | none → 0d | resources Người biên tập ngôn ngữ [200%] → Nhân viên sao chép chỉnh sửa [200%]; baseline start 2015-06-01 14:00 → 2025-11-24 14:00; baseline finish 2015-06-16 16:00 → 2025-12-09 16:00 |
| 24 | Tác giả duyệt biên tập chính tả & hình thức | 2025-12-16 08:00 → 2025-12-09 16:00 (-7d) | 2025-12-29 17:00 → 2025-12-23 16:00 (-6d) |  |  |  | resources Bùi Văn Khải; Người biên tập ngôn ngữ [25%] → Bùi Văn Khải; Nhân viên sao chép chỉnh sửa [25%]; baseline start 2015-06-16 16:00 → 2025-12-09 16:00; baseline finish 2015-06-30 16:00 → 2025-12-23 16:00 |
| 25 | Tích hợp chỉnh sửa biên tập chính tả & hình thức | 2025-12-25 13:00 → 2025-12-19 11:00 (-6d) | 2026-01-01 15:00 → 2025-12-26 14:00 (-6d) |  |  |  | baseline start 2015-06-26 11:00 → 2025-12-19 11:00; baseline finish 2015-07-03 14:00 → 2025-12-26 14:00 |
| 26 | Bàn giao cho bộ phận sản xuất | 2026-01-01 15:00 → 2025-12-26 14:00 (-6d) | 2026-01-01 15:00 → 2025-12-26 14:00 (-6d) |  |  |  | baseline start 2015-07-03 14:00 → 2025-12-26 14:00; baseline finish 2015-07-03 14:00 → 2025-12-26 14:00 |
| 27 | **Thiết kế và sản xuất** | 2026-01-01 15:00 → 2025-12-26 14:00 (-6d) | 2026-03-24 17:00 → 2026-03-18 16:00 (-6d) |  |  |  | baseline start 2015-07-03 14:00 → 2025-12-26 14:00; baseline finish 2015-09-23 16:00 → 2026-03-18 16:00 |
| 28 | Dàn trang | 2026-01-01 15:00 → 2025-12-26 14:00 (-6d) | 2026-01-22 15:00 → 2026-01-16 14:00 (-6d) |  |  |  | resources Phạm Ngọc Lan → Đinh Thị Hồng Nhung; baseline start 2015-07-03 14:00 → 2025-12-26 14:00; baseline finish 2015-07-24 14:00 → 2026-01-16 14:00 |
| 29 | Thiết kế minh họa nội thất (trong sách) | 2026-01-01 15:00 → 2025-12-26 14:00 (-6d) | 2026-01-22 17:00 → 2026-01-16 16:00 (-6d) |  |  |  | was named Thiết kế minh họa nội dung sách; resources Đinh Thị Hồng Nhung; Lê Anh Tuấn → Võ Hoàng Nam; Lê Anh Tuấn; baseline start 2015-07-03 14:00 → 2025-12-26 14:00; baseline finish 2015-07-24 16:00 → 2026-01-16 16:00 |
| 30 | **Duyệt bản trang lần 1** | 2026-01-23 08:00 → 2026-01-16 16:00 (-7d) | 2026-03-05 17:00 → 2026-02-27 16:00 (-6d) |  |  |  | baseline start 2015-07-24 16:00 → 2026-01-16 16:00; baseline finish 2015-09-04 16:00 → 2026-02-27 16:00 |
| 31 | Hiệu đính và lập mục lục | 2026-01-23 08:00 → 2026-01-16 16:00 (-7d) | 2026-02-05 17:00 → 2026-01-30 16:00 (-6d) |  |  |  | resources Bùi Văn Khải; Người biên tập ngôn ngữ → Bùi Văn Khải; Nhân viên sao chép chỉnh sửa; baseline start 2015-07-24 16:00 → 2026-01-16 16:00; baseline finish 2015-08-07 16:00 → 2026-01-30 16:00 |
| 32 | Tích hợp chỉnh sửa từ duyệt bản trang lần 1 | 2026-02-06 08:00 → 2026-01-30 16:00 (-7d) | 2026-02-19 17:00 → 2026-02-13 16:00 (-6d) |  |  |  | baseline start 2015-08-07 16:00 → 2026-01-30 16:00; baseline finish 2015-08-21 16:00 → 2026-02-13 16:00 |
| 33 | Gửi bản đã hiệu đính cho sản xuất | 2026-02-19 17:00 → 2026-02-13 16:00 (-6d) | 2026-02-19 17:00 → 2026-02-13 16:00 (-6d) |  |  |  | baseline start 2015-08-21 16:00 → 2026-02-13 16:00; baseline finish 2015-08-21 16:00 → 2026-02-13 16:00 |
| 34 | Nhập chỉnh sửa trang và mục lục | 2026-02-20 08:00 → 2026-02-13 16:00 (-7d) | 2026-02-26 17:00 → 2026-02-20 16:00 (-6d) |  |  |  | resources Phạm Ngọc Lan; Trần Thị Thu Hà [50%] → Đinh Thị Hồng Nhung; Trần Thị Thu Hà [50%]; baseline start 2015-08-21 16:00 → 2026-02-13 16:00; baseline finish 2015-08-28 16:00 → 2026-02-20 16:00 |
| 35 | Thiết kế bìa | 2026-02-27 08:00 → 2026-02-20 16:00 (-7d) | 2026-03-05 17:00 → 2026-02-27 16:00 (-6d) |  |  |  | resources Đinh Thị Hồng Nhung → Võ Hoàng Nam; baseline start 2015-08-28 16:00 → 2026-02-20 16:00; baseline finish 2015-09-04 16:00 → 2026-02-27 16:00 |
| 36 | **Duyệt bản trang lần 2** | 2026-03-06 08:00 → 2026-02-27 16:00 (-7d) | 2026-03-24 17:00 → 2026-03-18 16:00 (-6d) |  |  |  | baseline start 2015-09-04 16:00 → 2026-02-27 16:00; baseline finish 2015-09-23 16:00 → 2026-03-18 16:00 |
| 37 | Hiệu đính và duyệt lại | 2026-03-06 08:00 → 2026-02-27 16:00 (-7d) | 2026-03-16 12:00 → 2026-03-10 11:00 (-6d) |  |  |  | baseline start 2015-09-04 16:00 → 2026-02-27 16:00; baseline finish 2015-09-15 11:00 → 2026-03-10 11:00 |
| 38 | Gửi bản đã hiệu đính cho sản xuất | 2026-03-16 12:00 → 2026-03-10 11:00 (-6d) | 2026-03-16 12:00 → 2026-03-10 11:00 (-6d) |  |  |  | baseline start 2015-09-15 11:00 → 2026-03-10 11:00; baseline finish 2015-09-15 11:00 → 2026-03-10 11:00 |
| 39 | Duyệt cuối cùng | 2026-03-18 08:00 → 2026-03-11 16:00 (-7d) | 2026-03-24 17:00 → 2026-03-18 16:00 (-6d) |  |  |  | resources Phạm Ngọc Lan; Lê Anh Tuấn [50%]; Nguyễn Minh Quân [50%]; Bản in thử đã đóng quyển [20 copies] → Đinh Thị Hồng Nhung; Lê Anh Tuấn [50%]; Nguyễn Minh Quân [50%]; Bản in thử đã đóng quyển [20 copies]; baseline start 2015-09-16 16:00 → 2026-03-11 16:00; baseline finish 2015-09-23 16:00 → 2026-03-18 16:00 |
| 40 | **Thiết kế website đi kèm sách** | 2026-03-06 08:00 → 2026-02-27 16:00 (-7d) | 2026-03-19 17:00 → 2026-03-13 16:00 (-6d) |  |  |  | baseline start 2015-09-04 16:00 → 2026-02-27 16:00; baseline finish 2015-09-18 16:00 → 2026-03-13 16:00 |
| 41 | Tạo bản mẫu (mockup) | 2026-03-06 08:00 → 2026-02-27 16:00 (-7d) | 2026-03-17 17:00 → 2026-03-11 16:00 (-6d) |  |  |  | was named Tạo bản mẫu; resources Đinh Thị Hồng Nhung; Lê Anh Tuấn → Võ Hoàng Nam; Lê Anh Tuấn; baseline start 2015-09-04 16:00 → 2026-02-27 16:00; baseline finish 2015-09-16 16:00 → 2026-03-11 16:00 |
| 42 | Duyệt cùng tác giả | 2026-03-18 08:00 → 2026-03-11 16:00 (-7d) | 2026-03-19 17:00 → 2026-03-13 16:00 (-6d) |  |  |  | resources Đinh Thị Hồng Nhung; Bùi Văn Khải; Du lịch [0.1%]; Trần Thị Thu Hà [50%] → Võ Hoàng Nam; Bùi Văn Khải; Du lịch [0.1%]; Trần Thị Thu Hà [50%]; baseline start 2015-09-16 16:00 → 2026-03-11 16:00; baseline finish 2015-09-18 16:00 → 2026-03-13 16:00 |
| 43 | **Chuẩn bị màu và in ấn** | 2026-03-25 08:00 → 2026-03-18 16:00 (-7d) | 2026-05-25 17:00 → 2026-05-21 16:00 (-4d) | 44d → 46d |  |  | baseline start 2015-09-23 16:00 → 2026-03-18 16:00; baseline finish 2015-11-26 16:00 → 2026-05-21 16:00 |
| 44 | Gửi đến nhà in màu | 2026-03-25 08:00 → 2026-03-18 16:00 (-7d) | 2026-03-25 17:00 → 2026-03-23 16:00 (-2d) |  |  |  | baseline start 2015-09-23 16:00 → 2026-03-18 16:00; baseline finish 2015-09-28 16:00 → 2026-03-23 16:00 |
| 45 | Tạo bản in thử | 2026-03-26 08:00 → 2026-03-23 16:00 (-3d) | 2026-04-08 17:00 → 2026-04-06 16:00 (-2d) |  |  |  | resources Dịch vụ chỉnh màu in ấn → Dịch vụ cấu hình màu; baseline start 2015-09-28 16:00 → 2026-03-23 16:00; baseline finish 2015-10-12 16:00 → 2026-04-06 16:00 |
| 46 | In và vận chuyển | 2026-04-14 08:00 → 2026-04-09 16:00 (-5d) | 2026-05-25 17:00 → 2026-05-21 16:00 (-4d) |  |  |  | resources Dịch vụ in ấn → DỊch vụ in; baseline start 2015-10-15 16:00 → 2026-04-09 16:00; baseline finish 2015-11-26 16:00 → 2026-05-21 16:00 |
| 47 | **Chuẩn bị ra mắt sách** | 2026-03-26 08:00 → 2026-03-23 16:00 (-3d) | 2026-04-24 17:00 → 2026-04-22 16:00 (-2d) |  |  |  | baseline start 2015-09-28 16:00 → 2026-03-23 16:00; baseline finish 2015-10-28 16:00 → 2026-04-22 16:00 |
| 48 | Lập kế hoạch ra mắt | 2026-03-26 08:00 → 2026-03-23 16:00 (-3d) | 2026-04-01 17:00 → 2026-03-30 16:00 (-2d) |  |  |  | resources Nguyễn Minh Quân [50%]; Phạm Ngọc Lan → Nguyễn Minh Quân [50%]; Đinh Thị Hồng Nhung; baseline start 2015-09-28 16:00 → 2026-03-23 16:00; baseline finish 2015-10-05 16:00 → 2026-03-30 16:00 |
| 49 | Phân công thành viên nhóm ra mắt | 2026-04-02 08:00 → 2026-03-30 16:00 (-3d) | 2026-04-02 17:00 → 2026-03-31 16:00 (-2d) |  |  |  | baseline start 2015-10-05 16:00 → 2026-03-30 16:00; baseline finish 2015-10-06 16:00 → 2026-03-31 16:00 |
| 50 | Hoàn thành bảng câu hỏi cho tác giả | 2026-04-03 08:00 → 2026-03-31 16:00 (-3d) | 2026-04-09 17:00 → 2026-04-07 16:00 (-2d) |  |  |  | baseline start 2015-10-06 16:00 → 2026-03-31 16:00; baseline finish 2015-10-13 16:00 → 2026-04-07 16:00 |
| 51 | Sắp xếp phỏng vấn tác giả | 2026-04-10 08:00 → 2026-04-07 16:00 (-3d) | 2026-04-10 17:00 → 2026-04-08 16:00 (-2d) |  |  |  | baseline start 2015-10-13 16:00 → 2026-04-07 16:00; baseline finish 2015-10-14 16:00 → 2026-04-08 16:00 |
| 52 | Thiết kế và đặt in tài liệu marketing | 2026-04-13 08:00 → 2026-04-08 16:00 (-5d) | 2026-04-24 17:00 → 2026-04-22 16:00 (-2d) |  |  |  | baseline start 2015-10-14 16:00 → 2026-04-08 16:00; baseline finish 2015-10-28 16:00 → 2026-04-22 16:00 |

## Version 4 (data date 2025-09-27, saved 2025-09-27, file Advanced Tracking D_Start.mpp)

Last finish stays 2026-05-21. Complete tasks 1 → 19.

Changed:

| ID | Task | Start | Finish | Duration | Complete | Total float | Other |
| --- | --- | --- | --- | --- | --- | --- | --- |
| 1 | **Editorial staff meeting** | 2025-10-06 08:00 A | 2025-12-29 09:00 → 2026-01-26 09:00 (+28d) | 60.12d → 80.12d | 0% → 54% | 103.75d → 83.88d | baseline start 2025-10-06 08:00 → 2015-04-13 08:00; baseline finish 2025-12-29 09:00 → 2015-07-06 09:00 |
| 2 | Editorial staff meeting 1 | 2025-10-06 08:00 A | 2025-10-06 09:00 A |  | 0% → 100% | 163.75d → none | resources Nguyễn Minh Quân; Phạm Ngọc Lan; Lê Anh Tuấn; Trần Thị Thu Hà [50%] → Nguyễn Minh Quân; Võ Hoàng Nam; Lê Anh Tuấn; Trần Thị Thu Hà [50%]; baseline start 2025-10-06 08:00 → 2015-04-13 08:00; baseline finish 2025-10-06 09:00 → 2015-04-13 09:00 |
| 3 | Editorial staff meeting 2 | 2025-10-13 08:00 A | 2025-10-13 09:00 A |  | 0% → 100% | 158.75d → none | resources Nguyễn Minh Quân; Phạm Ngọc Lan; Lê Anh Tuấn; Trần Thị Thu Hà [50%] → Nguyễn Minh Quân; Võ Hoàng Nam; Lê Anh Tuấn; Trần Thị Thu Hà [50%]; baseline start 2025-10-13 08:00 → 2015-04-20 08:00; baseline finish 2025-10-13 09:00 → 2015-04-20 09:00 |
| 4 | Editorial staff meeting 3 | 2025-10-20 08:00 A | 2025-10-20 09:00 A |  | 0% → 100% | 153.75d → none | resources Nguyễn Minh Quân; Phạm Ngọc Lan; Lê Anh Tuấn; Trần Thị Thu Hà [50%] → Nguyễn Minh Quân; Võ Hoàng Nam; Lê Anh Tuấn; Trần Thị Thu Hà [50%]; baseline start 2025-10-20 08:00 → 2015-04-27 08:00; baseline finish 2025-10-20 09:00 → 2015-04-27 09:00 |
| 5 | Editorial staff meeting 4 | 2025-10-27 08:00 A | 2025-10-27 09:00 A |  | 0% → 100% | 148.75d → none | resources Nguyễn Minh Quân; Phạm Ngọc Lan; Lê Anh Tuấn; Trần Thị Thu Hà [50%] → Nguyễn Minh Quân; Võ Hoàng Nam; Lê Anh Tuấn; Trần Thị Thu Hà [50%]; baseline start 2025-10-27 08:00 → 2015-05-04 08:00; baseline finish 2025-10-27 09:00 → 2015-05-04 09:00 |
| 6 | Editorial staff meeting 5 | 2025-11-03 08:00 A | 2025-11-03 09:00 A |  | 0% → 100% | 143.75d → none | resources Nguyễn Minh Quân; Phạm Ngọc Lan; Lê Anh Tuấn; Trần Thị Thu Hà [50%] → Nguyễn Minh Quân; Võ Hoàng Nam; Lê Anh Tuấn; Trần Thị Thu Hà [50%]; baseline start 2025-11-03 08:00 → 2015-05-11 08:00; baseline finish 2025-11-03 09:00 → 2015-05-11 09:00 |
| 7 | Editorial staff meeting 6 | 2025-11-10 08:00 A | 2025-11-10 09:00 A |  | 0% → 100% | 138.75d → none | resources Nguyễn Minh Quân; Phạm Ngọc Lan; Lê Anh Tuấn; Trần Thị Thu Hà [50%] → Nguyễn Minh Quân; Võ Hoàng Nam; Lê Anh Tuấn; Trần Thị Thu Hà [50%]; baseline start 2025-11-10 08:00 → 2015-05-18 08:00; baseline finish 2025-11-10 09:00 → 2015-05-18 09:00 |
| 8 | Editorial staff meeting 7 | 2025-11-17 08:00 A | 2025-11-17 09:00 A |  | 0% → 100% | 133.75d → none | resources Nguyễn Minh Quân; Phạm Ngọc Lan; Lê Anh Tuấn; Trần Thị Thu Hà [50%] → Nguyễn Minh Quân; Võ Hoàng Nam; Lê Anh Tuấn; Trần Thị Thu Hà [50%]; baseline start 2025-11-17 08:00 → 2015-05-25 08:00; baseline finish 2025-11-17 09:00 → 2015-05-25 09:00 |
| 9 | Editorial staff meeting 8 | 2025-11-24 08:00 → 2026-01-26 08:00 (+63d) | 2025-11-24 09:00 → 2026-01-26 09:00 (+63d) |  |  | 128.75d → 83.88d | constraint start no earlier than 2025-11-24 08:00 → start no earlier than 2026-01-26 08:00; resources Nguyễn Minh Quân; Phạm Ngọc Lan; Lê Anh Tuấn; Trần Thị Thu Hà [50%] → Nguyễn Minh Quân; Võ Hoàng Nam; Lê Anh Tuấn; Trần Thị Thu Hà [50%]; baseline start 2025-11-24 08:00 → 2015-06-01 08:00; baseline finish 2025-11-24 09:00 → 2015-06-01 09:00 |
| 10 | Editorial staff meeting 9 | 2025-12-01 08:00 → 2026-01-26 08:00 (+56d) | 2025-12-01 09:00 → 2026-01-26 09:00 (+56d) |  |  | 123.75d → 83.88d | constraint start no earlier than 2025-12-01 08:00 → start no earlier than 2026-01-26 08:00; resources Nguyễn Minh Quân; Phạm Ngọc Lan; Lê Anh Tuấn; Trần Thị Thu Hà [50%] → Nguyễn Minh Quân; Võ Hoàng Nam; Lê Anh Tuấn; Trần Thị Thu Hà [50%]; baseline start 2025-12-01 08:00 → 2015-06-08 08:00; baseline finish 2025-12-01 09:00 → 2015-06-08 09:00 |
| 11 | Editorial staff meeting 10 | 2025-12-08 08:00 → 2026-01-26 08:00 (+49d) | 2025-12-08 09:00 → 2026-01-26 09:00 (+49d) |  |  | 118.75d → 83.88d | constraint start no earlier than 2025-12-08 08:00 → start no earlier than 2026-01-26 08:00; resources Nguyễn Minh Quân; Phạm Ngọc Lan; Lê Anh Tuấn; Trần Thị Thu Hà [50%] → Nguyễn Minh Quân; Võ Hoàng Nam; Lê Anh Tuấn; Trần Thị Thu Hà [50%]; baseline start 2025-12-08 08:00 → 2015-06-15 08:00; baseline finish 2025-12-08 09:00 → 2015-06-15 09:00 |
| 12 | Editorial staff meeting 11 | 2025-12-15 08:00 → 2026-01-26 08:00 (+42d) | 2025-12-15 09:00 → 2026-01-26 09:00 (+42d) |  |  | 113.75d → 83.88d | constraint start no earlier than 2025-12-15 08:00 → start no earlier than 2026-01-26 08:00; resources Nguyễn Minh Quân; Phạm Ngọc Lan; Lê Anh Tuấn; Trần Thị Thu Hà [50%] → Nguyễn Minh Quân; Võ Hoàng Nam; Lê Anh Tuấn; Trần Thị Thu Hà [50%]; baseline start 2025-12-15 08:00 → 2015-06-22 08:00; baseline finish 2025-12-15 09:00 → 2015-06-22 09:00 |
| 13 | Editorial staff meeting 12 | 2025-12-22 08:00 → 2026-01-26 08:00 (+35d) | 2025-12-22 09:00 → 2026-01-26 09:00 (+35d) |  |  | 108.75d → 83.88d | constraint start no earlier than 2025-12-22 08:00 → start no earlier than 2026-01-26 08:00; resources Nguyễn Minh Quân; Phạm Ngọc Lan; Lê Anh Tuấn; Trần Thị Thu Hà [50%] → Nguyễn Minh Quân; Võ Hoàng Nam; Lê Anh Tuấn; Trần Thị Thu Hà [50%]; baseline start 2025-12-22 08:00 → 2015-06-29 08:00; baseline finish 2025-12-22 09:00 → 2015-06-29 09:00 |
| 14 | Editorial staff meeting 13 | 2025-12-29 08:00 → 2026-01-26 08:00 (+28d) | 2025-12-29 09:00 → 2026-01-26 09:00 (+28d) |  |  | 103.75d → 83.88d | constraint start no earlier than 2025-12-29 08:00 → start no earlier than 2026-01-26 08:00; resources Nguyễn Minh Quân; Phạm Ngọc Lan; Lê Anh Tuấn; Trần Thị Thu Hà [50%] → Nguyễn Minh Quân; Võ Hoàng Nam; Lê Anh Tuấn; Trần Thị Thu Hà [50%]; baseline start 2025-12-29 08:00 → 2015-07-06 08:00; baseline finish 2025-12-29 09:00 → 2015-07-06 09:00 |
| 15 | **Tiếp nhận bản thảo** | 2025-09-27 08:00 A → 2025-09-29 08:00 A (+2d) | 2025-11-17 12:00 → 2025-11-17 08:00 A | 35.5d → 35d | 0% → 100% | 0d → none | was named Mua sắm; baseline start 2025-09-27 08:00 → 2015-04-06 08:00; baseline finish 2025-11-17 12:00 → 2015-05-25 12:00 |
| 16 | Đã nhận bản thảo | 2025-09-27 08:00 A → 2025-09-29 08:00 A (+2d) | 2025-09-27 08:00 A → 2025-09-29 08:00 A (+2d) |  |  |  | was named Tiếp nhận bản thảo; baseline start 2025-09-27 08:00 → 2015-04-06 08:00; baseline finish 2025-09-27 08:00 → 2015-04-06 08:00 |
| 17 | Biên tập nội dung | 2025-09-29 08:00 A | 2025-10-23 10:00 A |  | 0% → 100% | 0d → none | baseline start 2025-09-29 08:00 → 2015-04-06 08:00; baseline finish 2025-10-23 10:00 → 2015-04-30 10:00 |
| 18 | Duyệt tranh minh họa gốc | 2025-10-16 10:00 → 2025-10-14 10:00 A (-2d) | 2025-10-30 12:00 → 2025-10-28 12:00 A (-2d) |  | 0% → 100% | 0d → none | was named Đánh giá bản vẽ gốc; resources Lê Anh Tuấn; Đinh Thị Hồng Nhung → Lê Anh Tuấn; Phạm Ngọc Lan; baseline start 2025-10-16 10:00 → 2015-04-23 10:00; baseline finish 2025-10-30 12:00 → 2015-05-07 12:00 |
| 19 | Tác giả duyệt biên tập nội dung | 2025-10-30 13:00 → 2025-10-28 13:00 A (-2d) | 2025-11-17 12:00 → 2025-11-14 17:00 A (-3d) | 12d → 13.5d | 0% → 100% | 0d → none | was named Tác giả duyệt bản biên tập nội dung; resources Bùi Văn Khải; Nhân viên sao chép chỉnh sửa → Bùi Văn Khải; Người biên tập ngôn ngữ; baseline start 2025-10-30 13:00 → 2015-05-07 13:00; baseline finish 2025-11-17 12:00 → 2015-05-25 12:00 |
| 20 | Bàn giao cho ban biên tập | 2025-11-17 12:00 → 2025-11-17 08:00 A | 2025-11-17 12:00 → 2025-11-17 08:00 A |  | 0% → 100% | 0d → none | was named Chuyển giao cho bộ phận biên tập; baseline start 2025-11-17 12:00 → 2015-05-25 12:00; baseline finish 2025-11-17 12:00 → 2015-05-25 12:00 |
| 21 | **Biên tập** | 2025-11-17 13:00 → 2025-11-17 08:00 A | 2025-12-26 14:00 → 2025-12-29 10:00 A (+3d) | 29.12d → 30.25d | 0% → 100% | 0d → none | was named Ban biên tập; baseline start 2025-11-17 13:00 → 2015-05-25 13:00; baseline finish 2025-12-26 14:00 → 2015-07-03 14:00 |
| 22 | Sắp xếp bản thảo để biên tập chính tả & hình thức | 2025-11-17 13:00 → 2025-11-17 08:00 A | 2025-11-24 14:00 → 2025-11-21 17:00 A (-3d) | 5.12d → 5d | 0% → 100% | 0d → none | was named Chuẩn bị bản thảo cho biên tập chi tiết; baseline start 2025-11-17 13:00 → 2015-05-25 13:00; baseline finish 2025-11-24 14:00 → 2015-06-01 14:00 |
| 23 | Biên tập chính tả & hình thức | 2025-11-24 14:00 → 2025-11-24 08:00 A | 2025-12-09 16:00 → 2025-12-08 12:00 A (-1d) | 11.25d → 10.5d | 0% → 100% | 0d → none | resources Nhân viên sao chép chỉnh sửa [200%] → Người biên tập ngôn ngữ [200%]; baseline start 2025-11-24 14:00 → 2015-06-01 14:00; baseline finish 2025-12-09 16:00 → 2015-06-16 16:00 |
| 24 | Tác giả duyệt biên tập chính tả & hình thức | 2025-12-09 16:00 → 2025-12-08 13:00 A (-1d) | 2025-12-23 16:00 → 2025-12-22 14:36 A (-1d) | 10d → 10.2d | 0% → 100% | 0d → none | resources Bùi Văn Khải; Nhân viên sao chép chỉnh sửa [25%] → Bùi Văn Khải; Người biên tập ngôn ngữ [25%]; baseline start 2025-12-09 16:00 → 2015-06-16 16:00; baseline finish 2025-12-23 16:00 → 2015-06-30 16:00 |
| 25 | Tích hợp chỉnh sửa biên tập chính tả & hình thức | 2025-12-19 11:00 → 2025-12-22 08:00 A (+3d) | 2025-12-26 14:00 → 2025-12-29 10:00 A (+3d) |  | 0% → 100% | 0d → none | baseline start 2025-12-19 11:00 → 2015-06-26 11:00; baseline finish 2025-12-26 14:00 → 2015-07-03 14:00 |
| 26 | Bàn giao cho bộ phận sản xuất | 2025-12-26 14:00 → 2025-12-29 08:00 A (+3d) | 2025-12-26 14:00 → 2025-12-29 08:00 A (+3d) |  | 0% → 100% | 0d → none | baseline start 2025-12-26 14:00 → 2015-07-03 14:00; baseline finish 2025-12-26 14:00 → 2015-07-03 14:00 |
| 27 | **Thiết kế và sản xuất** | 2025-12-26 14:00 → 2025-12-29 08:00 A (+3d) | 2026-03-18 16:00 → 2026-03-20 17:00 (+2d) | 58.25d → 60d | 0% → 43% |  | baseline start 2025-12-26 14:00 → 2015-07-03 14:00; baseline finish 2026-03-18 16:00 → 2015-09-23 16:00 |
| 28 | Dàn trang | 2025-12-26 14:00 → 2025-12-29 08:00 A (+3d) | 2026-01-16 14:00 → 2026-01-16 17:00 A |  | 0% → 100% | 0d → none | resources Đinh Thị Hồng Nhung → Phạm Ngọc Lan; baseline start 2025-12-26 14:00 → 2015-07-03 14:00; baseline finish 2026-01-16 14:00 → 2015-07-24 14:00 |
| 29 | Thiết kế minh họa nội dung sách | 2025-12-26 14:00 → 2025-12-29 08:00 A (+3d) | 2026-01-16 16:00 → 2026-01-21 13:48 A (+5d) | 15.25d → 17.6d | 0% → 100% | 0d → none | was named Thiết kế minh họa nội thất (trong sách); resources Võ Hoàng Nam; Lê Anh Tuấn → Đinh Thị Hồng Nhung; Lê Anh Tuấn; baseline start 2025-12-26 14:00 → 2015-07-03 14:00; baseline finish 2026-01-16 16:00 → 2015-07-24 16:00 |
| 30 | **Duyệt bản trang lần 1** | 2026-01-16 16:00 → 2026-01-20 08:00 A (+4d) | 2026-02-27 16:00 → 2026-03-04 17:00 (+5d) | 30d → 32d | 0% → 7% |  | baseline start 2026-01-16 16:00 → 2015-07-24 16:00; baseline finish 2026-02-27 16:00 → 2015-09-04 16:00 |
| 31 | Hiệu đính và lập mục lục | 2026-01-16 16:00 → 2026-01-20 08:00 A (+4d) | 2026-01-30 16:00 → 2026-02-04 17:00 (+5d) |  | 0% → 20% |  | resources Bùi Văn Khải; Nhân viên sao chép chỉnh sửa → Bùi Văn Khải; Người biên tập ngôn ngữ; baseline start 2026-01-16 16:00 → 2015-07-24 16:00; baseline finish 2026-01-30 16:00 → 2015-08-07 16:00 |
| 32 | Tích hợp chỉnh sửa từ duyệt bản trang lần 1 | 2026-01-30 16:00 → 2026-02-05 08:00 (+6d) | 2026-02-13 16:00 → 2026-02-18 17:00 (+5d) |  |  |  | baseline start 2026-01-30 16:00 → 2015-08-07 16:00; baseline finish 2026-02-13 16:00 → 2015-08-21 16:00 |
| 33 | Gửi bản đã hiệu đính cho sản xuất | 2026-02-13 16:00 → 2026-02-18 17:00 (+5d) | 2026-02-13 16:00 → 2026-02-18 17:00 (+5d) |  |  |  | baseline start 2026-02-13 16:00 → 2015-08-21 16:00; baseline finish 2026-02-13 16:00 → 2015-08-21 16:00 |
| 34 | Nhập chỉnh sửa trang và mục lục | 2026-02-13 16:00 → 2026-02-19 08:00 (+6d) | 2026-02-20 16:00 → 2026-02-25 17:00 (+5d) |  |  |  | resources Đinh Thị Hồng Nhung; Trần Thị Thu Hà [50%] → Phạm Ngọc Lan; Trần Thị Thu Hà [50%]; baseline start 2026-02-13 16:00 → 2015-08-21 16:00; baseline finish 2026-02-20 16:00 → 2015-08-28 16:00 |
| 35 | Thiết kế bìa | 2026-02-20 16:00 → 2026-02-26 08:00 (+6d) | 2026-02-27 16:00 → 2026-03-04 17:00 (+5d) |  |  |  | resources Võ Hoàng Nam → Đinh Thị Hồng Nhung; baseline start 2026-02-20 16:00 → 2015-08-28 16:00; baseline finish 2026-02-27 16:00 → 2015-09-04 16:00 |
| 36 | **Duyệt bản trang lần 2** | 2026-02-27 16:00 → 2026-03-05 08:00 (+6d) | 2026-03-18 16:00 → 2026-03-20 17:00 (+2d) | 13d → 12d |  |  | baseline start 2026-02-27 16:00 → 2015-09-04 16:00; baseline finish 2026-03-18 16:00 → 2015-09-23 16:00 |
| 37 | Hiệu đính và duyệt lại | 2026-02-27 16:00 → 2026-03-05 08:00 (+6d) | 2026-03-10 11:00 → 2026-03-13 12:00 (+3d) |  |  |  | baseline start 2026-02-27 16:00 → 2015-09-04 16:00; baseline finish 2026-03-10 11:00 → 2015-09-15 11:00 |
| 38 | Gửi bản đã hiệu đính cho sản xuất | 2026-03-10 11:00 → 2026-03-13 12:00 (+3d) | 2026-03-10 11:00 → 2026-03-13 12:00 (+3d) |  |  |  | baseline start 2026-03-10 11:00 → 2015-09-15 11:00; baseline finish 2026-03-10 11:00 → 2015-09-15 11:00 |
| 39 | Duyệt cuối cùng | 2026-03-11 16:00 → 2026-03-16 08:00 (+5d) | 2026-03-18 16:00 → 2026-03-20 17:00 (+2d) |  |  |  | resources Đinh Thị Hồng Nhung; Lê Anh Tuấn [50%]; Nguyễn Minh Quân [50%]; Bản in thử đã đóng quyển [20 copies] → Phạm Ngọc Lan; Lê Anh Tuấn [50%]; Nguyễn Minh Quân [50%]; Bản in thử đã đóng quyển [20 copies]; baseline start 2026-03-11 16:00 → 2015-09-16 16:00; baseline finish 2026-03-18 16:00 → 2015-09-23 16:00 |
| 40 | **Thiết kế website đi kèm sách** | 2026-02-27 16:00 → 2026-03-05 08:00 (+6d) | 2026-03-13 16:00 → 2026-03-18 17:00 (+5d) |  |  | 3d → 2d | baseline start 2026-02-27 16:00 → 2015-09-04 16:00; baseline finish 2026-03-13 16:00 → 2015-09-18 16:00 |
| 41 | Tạo bản mẫu | 2026-02-27 16:00 → 2026-03-05 08:00 (+6d) | 2026-03-11 16:00 → 2026-03-16 17:00 (+5d) |  |  | 3d → 2d | was named Tạo bản mẫu (mockup); resources Võ Hoàng Nam; Lê Anh Tuấn → Đinh Thị Hồng Nhung; Lê Anh Tuấn; baseline start 2026-02-27 16:00 → 2015-09-04 16:00; baseline finish 2026-03-11 16:00 → 2015-09-16 16:00 |
| 42 | Duyệt cùng tác giả | 2026-03-11 16:00 → 2026-03-17 08:00 (+6d) | 2026-03-13 16:00 → 2026-03-18 17:00 (+5d) |  |  | 3d → 2d | resources Võ Hoàng Nam; Bùi Văn Khải; Du lịch [0.1%]; Trần Thị Thu Hà [50%] → Đinh Thị Hồng Nhung; Bùi Văn Khải; Du lịch [0.1%]; Trần Thị Thu Hà [50%]; baseline start 2026-03-11 16:00 → 2015-09-16 16:00; baseline finish 2026-03-13 16:00 → 2015-09-18 16:00 |
| 43 | **Chuẩn bị màu và in** | 2026-03-18 16:00 → 2026-03-23 08:00 (+5d) | 2026-05-21 16:00 → 2026-05-21 17:00 | 46d → 44d |  |  | was named Chuẩn bị màu và in ấn; baseline start 2026-03-18 16:00 → 2015-09-23 16:00; baseline finish 2026-05-21 16:00 → 2015-11-26 16:00 |
| 44 | Gửi đến nhà in màu | 2026-03-18 16:00 → 2026-03-23 08:00 (+5d) | 2026-03-23 16:00 → 2026-03-23 17:00 |  |  |  | baseline start 2026-03-18 16:00 → 2015-09-23 16:00; baseline finish 2026-03-23 16:00 → 2015-09-28 16:00 |
| 45 | Tạo bản in thử | 2026-03-23 16:00 → 2026-03-24 08:00 (+1d) | 2026-04-06 16:00 → 2026-04-06 17:00 |  |  |  | resources Dịch vụ cấu hình màu → Dịch vụ chỉnh màu in ấn; baseline start 2026-03-23 16:00 → 2015-09-28 16:00; baseline finish 2026-04-06 16:00 → 2015-10-12 16:00 |
| 46 | In và vận chuyển | 2026-04-09 16:00 → 2026-04-10 08:00 (+1d) | 2026-05-21 16:00 → 2026-05-21 17:00 |  |  |  | resources DỊch vụ in → Dịch vụ in ấn; baseline start 2026-04-09 16:00 → 2015-10-15 16:00; baseline finish 2026-05-21 16:00 → 2015-11-26 16:00 |
| 47 | **Chuẩn bị ra mắt sách** | 2026-03-23 16:00 → 2026-03-24 08:00 (+1d) | 2026-04-22 16:00 → 2026-04-22 17:00 |  |  |  | baseline start 2026-03-23 16:00 → 2015-09-28 16:00; baseline finish 2026-04-22 16:00 → 2015-10-28 16:00 |
| 48 | Lập kế hoạch ra mắt | 2026-03-23 16:00 → 2026-03-24 08:00 (+1d) | 2026-03-30 16:00 → 2026-03-30 17:00 |  |  |  | resources Nguyễn Minh Quân [50%]; Đinh Thị Hồng Nhung → Nguyễn Minh Quân [50%]; Phạm Ngọc Lan; baseline start 2026-03-23 16:00 → 2015-09-28 16:00; baseline finish 2026-03-30 16:00 → 2015-10-05 16:00 |
| 49 | Phân công thành viên nhóm ra mắt | 2026-03-30 16:00 → 2026-03-31 08:00 (+1d) | 2026-03-31 16:00 → 2026-03-31 17:00 |  |  |  | baseline start 2026-03-30 16:00 → 2015-10-05 16:00; baseline finish 2026-03-31 16:00 → 2015-10-06 16:00 |
| 50 | Hoàn thành bảng câu hỏi cho tác giả | 2026-03-31 16:00 → 2026-04-01 08:00 (+1d) | 2026-04-07 16:00 → 2026-04-07 17:00 |  |  |  | baseline start 2026-03-31 16:00 → 2015-10-06 16:00; baseline finish 2026-04-07 16:00 → 2015-10-13 16:00 |
| 51 | Sắp xếp phỏng vấn tác giả | 2026-04-07 16:00 → 2026-04-08 08:00 (+1d) | 2026-04-08 16:00 → 2026-04-08 17:00 |  |  |  | baseline start 2026-04-07 16:00 → 2015-10-13 16:00; baseline finish 2026-04-08 16:00 → 2015-10-14 16:00 |
| 52 | Thiết kế và đặt in tài liệu marketing | 2026-04-08 16:00 → 2026-04-09 08:00 (+1d) | 2026-04-22 16:00 → 2026-04-22 17:00 |  |  |  | baseline start 2026-04-08 16:00 → 2015-10-14 16:00; baseline finish 2026-04-22 16:00 → 2015-10-28 16:00 |
